Schedule from MS Project, 2019-04-01 to 2019-06-07, costs in €, A marks actual dates.

## Calendars

- Standard: Mon-Fri 08:00-12:00, 13:00-17:00; Sat-Sun off. Exceptions (off unless hours are given): 2019-05-01 (Dia do Trabalhador).

## Resources

| Resource | Rate |
| --- | --- |
| Rodrigo Costa Fernandes | 25 |
| Samuel Pires Brito | 25 |

## Schedule

| ID | WBS | Task | Type | Duration | Start | Finish | Predecessors | Complete | Baseline start | Baseline finish | Baseline duration | Constraint | Resources | Work | Actual work | Cost | Baseline cost | Actual cost |
| --- | --- | --- | --- | --- | --- | --- | --- | --- | --- | --- | --- | --- | --- | --- | --- | --- | --- | --- |
| 1 | 1 | **RealStand** |  | 48.42d | 2019-04-01 08:00 A | 2019-06-07 11:20 A |  | 100% | 2019-04-01 08:00 | 2019-06-28 15:00 | 63.75d? |  |  | 392.5h | 392.5h | 9,812.5 | 14,187.5 | 9,812.5 |
| 2 | 1.1 | **Sprint Meetings** |  | 39d | 2019-04-07 08:00 A | 2019-06-02 09:00 A |  | 100% |  |  |  |  |  |  |  |  |  |  |
| 3 | 1.1.1 | Sprint Meetings 1 | manual | 1h | 2019-04-07 08:00 A | 2019-04-07 09:00 A |  | 100% |  |  |  | start no earlier than 2019-04-07 08:00 |  |  |  |  |  |  |
| 4 | 1.1.2 | Sprint Meetings 2 | manual | 1h | 2019-04-14 08:00 A | 2019-04-14 09:00 A |  | 100% |  |  |  | start no earlier than 2019-04-14 08:00 |  |  |  |  |  |  |
| 5 | 1.1.3 | Sprint Meetings 3 | manual | 1h | 2019-04-21 08:00 A | 2019-04-21 09:00 A |  | 100% |  |  |  | start no earlier than 2019-04-21 08:00 |  |  |  |  |  |  |
| 6 | 1.1.4 | Sprint Meetings 4 | manual | 1h | 2019-04-28 08:00 A | 2019-04-28 09:00 A |  | 100% |  |  |  | start no earlier than 2019-04-28 08:00 |  |  |  |  |  |  |
| 7 | 1.1.5 | Sprint Meetings 5 | manual | 1h | 2019-05-05 08:00 A | 2019-05-05 09:00 A |  | 100% |  |  |  | start no earlier than 2019-05-05 08:00 |  |  |  |  |  |  |
| 8 | 1.1.6 | Sprint Meetings 6 | manual | 1h | 2019-05-12 08:00 A | 2019-05-12 09:00 A |  | 100% |  |  |  | start no earlier than 2019-05-12 08:00 |  |  |  |  |  |  |
| 9 | 1.1.7 | Sprint Meetings 7 | manual | 1h | 2019-05-19 08:00 A | 2019-05-19 09:00 A |  | 100% |  |  |  | start no earlier than 2019-05-19 08:00 |  |  |  |  |  |  |
| 10 | 1.1.8 | Sprint Meetings 8 | manual | 1h | 2019-05-26 08:00 A | 2019-05-26 09:00 A |  | 100% |  |  |  | start no earlier than 2019-05-26 08:00 |  |  |  |  |  |  |
| 11 | 1.1.9 | Sprint Meetings 9 | manual | 1h | 2019-06-02 08:00 A | 2019-06-02 09:00 A |  | 100% |  |  |  | start no earlier than 2019-06-02 08:00 |  |  |  |  |  |  |
| 12 | 1.2 | **Fazer o planeamento do Projeto** |  | 28.79d | 2019-04-01 08:00 A | 2019-05-10 15:20 A |  | 100% | 2019-04-01 08:00 | 2019-05-16 13:20 | 32.54d |  |  | 235.5h | 235.5h | 5,887.5 | 7,208.33 | 5,887.5 |
| 13 | 1.2.1 | **Fazer o planeamento no Project** |  | 2.62d | 2019-04-01 08:00 A | 2019-04-03 14:00 A |  | 100% | 2019-04-01 08:00 | 2019-04-02 12:00 | 1.5d |  |  | 25h | 25h | 625 | 300 | 625 |
| 14 | 1.2.1.1 | Fazer o "esqueleto" do projeto |  | 4h | 2019-04-01 08:00 A | 2019-04-01 12:00 A |  | 100% | 2019-04-01 08:00 | 2019-04-01 10:00 | 2h | start no earlier than 2019-04-01 08:00 | Rodrigo Costa Fernandes | 4h | 4h | 100 | 50 | 100 |
| 15 | 1.2.1.2 | Definir as tarefas especificas |  | 4h | 2019-04-01 13:00 A | 2019-04-01 17:00 A | 14 | 100% | 2019-04-01 10:00 | 2019-04-01 12:00 | 2h |  | Samuel Pires Brito | 4h | 4h | 100 | 50 | 100 |
| 16 | 1.2.1.3 | Definir os sprints |  | 4h | 2019-04-02 08:00 A | 2019-04-02 12:00 A | 15 | 100% | 2019-04-01 13:00 | 2019-04-01 15:00 | 2h |  | Rodrigo Costa Fernandes; Samuel Pires Brito | 8h | 8h | 200 | 50 | 200 |
| 17 | 1.2.1.4 | Definir o tempo de cada tarefa |  | 6h | 2019-04-02 13:00 A | 2019-04-03 10:00 A | 16 | 100% | 2019-04-01 15:00 | 2019-04-02 09:00 | 3h |  | Samuel Pires Brito | 6h | 6h | 150 | 75 | 150 |
| 18 | 1.2.1.5 | Definir os recursos de cada tarefa |  | 3h | 2019-04-03 10:00 A | 2019-04-03 14:00 A | 17 | 100% | 2019-04-02 09:00 | 2019-04-02 12:00 | 3h |  | Rodrigo Costa Fernandes | 3h | 3h | 75 | 75 | 75 |
| 19 | 1.2.2 | **Fazer o planeamento no Word** |  | 26.17d | 2019-04-03 14:00 A | 2019-05-10 15:20 A |  | 100% | 2019-04-02 13:00 | 2019-05-16 13:20 | 31.04d |  |  | 210.5h | 210.5h | 5,262.5 | 6,908.33 | 5,262.5 |
| 20 | 1.2.2.1 | **Relatório de Especificação de Requisitos** |  | 13.4d | 2019-04-03 14:00 A | 2019-04-23 08:10 A |  | 100% | 2019-04-02 13:00 | 2019-05-07 16:10 | 24.4d |  |  | 134.17h | 134.17h | 3,354.17 | 4,779.17 | 3,354.17 |
| 21 | 1.2.2.1.1 | **Introdução** |  | 1.52d | 2019-04-03 14:00 A | 2019-04-05 09:10 A |  | 100% | 2019-04-02 13:00 | 2019-04-04 16:10 | 2.4d |  |  | 15.17h | 15.17h | 379.17 | 479.17 | 379.17 |
| 22 | 1.2.2.1.1.1 | Introdução |  | 3h | 2019-04-03 14:00 A | 2019-04-03 17:00 A | 18 | 100% | 2019-04-02 13:00 | 2019-04-02 16:00 | 3h |  | Rodrigo Costa Fernandes; Samuel Pires Brito | 6h | 6h | 150 | 75 | 150 |
| 23 | 1.2.2.1.1.2 | Definição do Problema |  | 4h | 2019-04-04 08:00 A | 2019-04-04 12:00 A | 22 | 100% | 2019-04-02 16:00 | 2019-04-03 09:00 | 2h |  | Samuel Pires Brito | 4h | 4h | 100 | 50 | 100 |
| 24 | 1.2.2.1.1.3 | Participantes |  | 10min | 2019-04-04 13:00 A | 2019-04-04 13:10 A | 23 | 100% | 2019-04-03 09:00 | 2019-04-03 09:10 | 10min |  | Rodrigo Costa Fernandes | 0.17h | 0.17h | 4.17 | 4.17 | 4.17 |
| 25 | 1.2.2.1.1.4 | Configuração Operacional |  | 1h | 2019-04-04 13:10 A | 2019-04-04 14:10 A | 24 | 100% | 2019-04-03 09:10 | 2019-04-03 10:10 | 1h |  | Rodrigo Costa Fernandes | 1h | 1h | 25 | 25 | 25 |
| 26 | 1.2.2.1.1.5 | Análise de Impacto |  | 2h | 2019-04-04 14:10 A | 2019-04-04 16:10 A | 25 | 100% | 2019-04-03 10:10 | 2019-04-04 10:10 | 8h |  | Samuel Pires Brito | 2h | 2h | 50 | 200 | 50 |
| 27 | 1.2.2.1.1.6 | Sistemas Relacionados |  | 2h | 2019-04-04 16:10 A | 2019-04-05 09:10 A | 26 | 100% | 2019-04-04 10:10 | 2019-04-04 16:10 | 5h |  | Rodrigo Costa Fernandes | 2h | 2h | 50 | 125 | 50 |

| ID | WBS | Task | Duration | Start | Finish | Predecessors | Complete | Baseline start | Baseline finish | Baseline duration | Resources | Work | Actual work | Cost | Baseline cost | Actual cost |
| --- | --- | --- | --- | --- | --- | --- | --- | --- | --- | --- | --- | --- | --- | --- | --- | --- |
| 28 | 1.2.2.1.2 | **Requisitos Funcionais** | 4.25d | 2019-04-05 09:10 A | 2019-04-11 11:10 A |  | 100% | 2019-04-04 16:10 | 2019-04-22 16:10 | 12d |  | 34h | 34h | 850 | 2,250 | 850 |
| 29 | 1.2.2.1.2.1 | Atores | 4h | 2019-04-05 09:10 A | 2019-04-05 14:10 A | 27 | 100% | 2019-04-04 16:10 | 2019-04-05 16:10 | 8h | Rodrigo Costa Fernandes | 4h | 4h | 100 | 400 | 100 |
| 30 | 1.2.2.1.2.2 | Pré-condições | 7h | 2019-04-05 14:10 A | 2019-04-08 13:10 A | 29 | 100% | 2019-04-05 16:10 | 2019-04-17 16:10 | 8d | Rodrigo Costa Fernandes | 7h | 7h | 175 | 1,250 | 175 |
| 31 | 1.2.2.1.2.3 | Sequência de acontecimentos | 8h | 2019-04-08 13:10 A | 2019-04-09 13:10 A | 30 | 100% | 2019-04-17 16:10 | 2019-04-18 16:10 | 8h | Samuel Pires Brito | 8h | 8h | 200 | 200 | 200 |
| 32 | 1.2.2.1.2.4 | Caminhos alternativos | 8h | 2019-04-09 13:10 A | 2019-04-10 13:10 A | 31 | 100% | 2019-04-18 16:10 | 2019-04-19 16:10 | 8h | Samuel Pires Brito | 8h | 8h | 200 | 200 | 200 |
| 33 | 1.2.2.1.2.5 | Pós-condições | 7h | 2019-04-10 13:10 A | 2019-04-11 11:10 A | 32 | 100% | 2019-04-19 16:10 | 2019-04-22 16:10 | 8h | Rodrigo Costa Fernandes | 7h | 7h | 175 | 200 | 175 |
| 34 | 1.2.2.1.3 | **Requisitos Não Funcionais** | 5.62d | 2019-04-11 11:10 A | 2019-04-19 08:10 A |  | 100% | 2019-04-22 16:10 | 2019-05-07 16:10 | 10d |  | 69h | 69h | 1,725 | 2,050 | 1,725 |
| 35 | 1.2.2.1.3.1 | **Requisitos do Sistema Não Funcionais** | 3.5d | 2019-04-11 11:10 A | 2019-04-16 16:10 A |  | 100% | 2019-04-22 16:10 | 2019-04-26 14:10 | 3.75d |  | 42h | 42h | 1,050 | 875 | 1,050 |
| 36 | 1.2.2.1.3.1.1 | Performance | 7h | 2019-04-11 11:10 A | 2019-04-12 10:10 A | 33 | 100% | 2019-04-22 16:10 | 2019-04-23 15:10 | 7h | Samuel Pires Brito | 7h | 7h | 175 | 350 | 175 |
| 37 | 1.2.2.1.3.1.2 | Ambiente operacional | 7h | 2019-04-12 10:10 A | 2019-04-15 09:10 A | 36 | 100% | 2019-04-23 16:10 | 2019-04-24 15:10 | 7h | Rodrigo Costa Fernandes | 7h | 7h | 175 | 175 | 175 |
| 38 | 1.2.2.1.3.1.3 | Cumprimento de Standards | 7h | 2019-04-15 09:10 A | 2019-04-16 08:10 A | 37 | 100% | 2019-04-24 16:10 | 2019-04-25 15:10 | 7h | Rodrigo Costa Fernandes; Samuel Pires Brito | 14h | 14h | 350 | 175 | 350 |
| 39 | 1.2.2.1.3.1.4 | Características genéricas | 7h | 2019-04-16 08:10 A | 2019-04-16 16:10 A | 38 | 100% | 2019-04-25 15:10 | 2019-04-26 14:10 | 7h | Rodrigo Costa Fernandes; Samuel Pires Brito | 14h | 14h | 350 | 175 | 350 |
| 40 | 1.2.2.1.3.2 | **Requisitos do Processo** | 1.88d | 2019-04-16 16:10 A | 2019-04-18 15:10 A |  | 100% | 2019-04-26 14:10 | 2019-04-30 16:10 | 2.25d |  | 25h | 25h | 625 | 375 | 625 |
| 41 | 1.2.2.1.3.2.1 | Tempo de desenvolvimento | 5h | 2019-04-16 16:10 A | 2019-04-17 13:10 A | 39 | 100% | 2019-04-26 14:10 | 2019-04-29 10:10 | 5h | Rodrigo Costa Fernandes; Samuel Pires Brito | 10h | 10h | 250 | 125 | 250 |
| 42 | 1.2.2.1.3.2.2 | Custo de desenvolvimento | 5h | 2019-04-17 13:10 A | 2019-04-18 09:10 A | 41 | 100% | 2019-04-29 14:10 | 2019-04-30 10:10 | 5h | Rodrigo Costa Fernandes; Samuel Pires Brito | 10h | 10h | 250 | 125 | 250 |
| 43 | 1.2.2.1.3.2.3 | Entregas de software | 5h | 2019-04-18 09:10 A | 2019-04-18 15:10 A | 42 | 100% | 2019-04-30 10:10 | 2019-04-30 16:10 | 5h | Samuel Pires Brito | 5h | 5h | 125 | 125 | 125 |
| 44 | 1.2.2.1.3.3 | **Requisitos de Pessoal** | 0.25d | 2019-04-18 15:10 A | 2019-04-19 08:10 A |  | 100% | 2019-04-30 16:10 | 2019-05-03 16:10 | 2d |  | 2h | 2h | 50 | 400 | 50 |
| 45 | 1.2.2.1.3.3.1 | Membros da equipa de desenvolvimento | 1h | 2019-04-18 15:10 A | 2019-04-18 16:10 A | 43 | 100% | 2019-04-30 16:10 | 2019-05-02 16:10 | 1d | Rodrigo Costa Fernandes | 1h | 1h | 25 | 200 | 25 |
| 46 | 1.2.2.1.3.3.2 | Utilizadores | 1h | 2019-04-18 16:10 A | 2019-04-19 08:10 A | 45 | 100% | 2019-05-02 16:10 | 2019-05-03 16:10 | 1d | Rodrigo Costa Fernandes | 1h | 1h | 25 | 200 | 25 |
| 47 | 1.2.2.1.4 | Perspetiva de Desenvolvimento | 2d | 2019-04-19 08:10 A | 2019-04-23 08:10 A | 46 | 100% | 2019-05-03 16:10 | 2019-05-07 16:10 | 2d | Samuel Pires Brito | 16h | 16h | 400 | 400 | 400 |
| 48 | 1.2.2.2 | **Relatório de Planeamento** | 7.25d | 2019-04-23 08:10 A | 2019-05-03 10:10 A |  | 100% | 2019-05-07 16:10 | 2019-05-13 16:10 | 4d |  | 32h | 32h | 800 | 800 | 800 |
| 49 | 1.2.2.2.1 | Introdução | 1d | 2019-04-23 08:10 A | 2019-04-26 08:10 A | 47 | 100% | 2019-05-07 16:10 | 2019-05-08 16:10 | 1d | Samuel Pires Brito | 8h | 8h | 200 | 200 | 200 |
| 50 | 1.2.2.2.2 | Apresentação da planificação geral do projeto | 1d | 2019-04-26 08:10 A | 2019-04-29 08:10 A | 49 | 100% | 2019-05-08 16:10 | 2019-05-09 16:10 | 1d | Rodrigo Costa Fernandes | 8h | 8h | 200 | 200 | 200 |
| 51 | 1.2.2.2.3 | Plano de riscos | 1d | 2019-04-29 08:10 A | 2019-05-02 10:10 A | 50 | 100% | 2019-05-09 16:10 | 2019-05-10 16:10 | 1d | Samuel Pires Brito | 8h | 8h | 200 | 200 | 200 |
| 52 | 1.2.2.2.4 | Matriz de responsabilidades | 1d | 2019-05-02 10:10 A | 2019-05-03 10:10 A | 51 | 100% | 2019-05-10 16:10 | 2019-05-13 16:10 | 1d | Rodrigo Costa Fernandes | 8h | 8h | 200 | 200 | 200 |

| ID | WBS | Task | Duration | Start | Finish | Predecessors | Complete | Baseline start | Baseline finish | Baseline duration | Deadline | Resources | Work | Actual work | Cost | Baseline cost | Actual cost |
| --- | --- | --- | --- | --- | --- | --- | --- | --- | --- | --- | --- | --- | --- | --- | --- | --- | --- |
| 53 | 1.2.2.3 | **Relatório de Scrum** | 3.88d | 2019-05-03 10:10 A | 2019-05-09 09:10 A |  | 100% | 2019-05-07 16:10 | 2019-05-14 16:10 | 5d |  |  | 31h | 31h | 775 | 1,000 | 775 |
| 54 | 1.2.2.3.1 | Introdução | 1d | 2019-05-03 10:10 A | 2019-05-06 10:10 A | 52 | 100% | 2019-05-07 16:10 | 2019-05-08 16:10 | 1d |  | Samuel Pires Brito | 8h | 8h | 200 | 200 | 200 |
| 55 | 1.2.2.3.2 | Stakeholders | 1d | 2019-05-06 10:10 A | 2019-05-07 10:10 A | 54 | 100% | 2019-05-08 16:10 | 2019-05-09 16:10 | 1d |  | Rodrigo Costa Fernandes | 8h | 8h | 200 | 200 | 200 |
| 56 | 1.2.2.3.3 | Product Backlog | 1d | 2019-05-07 10:10 A | 2019-05-08 10:10 A | 55 | 100% | 2019-05-09 16:10 | 2019-05-10 16:10 | 1d |  | Samuel Pires Brito | 8h | 8h | 200 | 200 | 200 |
| 57 | 1.2.2.3.4 | Sprints | 0.88d | 2019-05-08 10:10 A | 2019-05-09 09:10 A | 56 | 100% | 2019-05-10 16:10 | 2019-05-14 16:10 | 2d |  | Rodrigo Costa Fernandes | 7h | 7h | 175 | 400 | 175 |
| 58 | 1.2.2.4 | **Relatório Final de Gestão de Projeto** | 1.65d | 2019-05-09 09:10 A | 2019-05-10 15:20 A |  | 100% | 2019-05-14 16:10 | 2019-05-16 13:20 | 1.65d |  |  | 13.33h | 13.33h | 333.33 | 329.17 | 333.33 |
| 59 | 1.2.2.4.1 | Introdução | 4h | 2019-05-09 09:10 A | 2019-05-09 14:10 A | 57 | 100% | 2019-05-14 16:10 | 2019-05-15 11:10 | 4h |  | Rodrigo Costa Fernandes | 4h | 4h | 100 | 100 | 100 |
| 60 | 1.2.2.4.2 | Matriz de Responsabilidades final detalhada | 4h | 2019-05-09 14:10 A | 2019-05-10 09:10 A | 59 | 100% | 2019-05-15 11:10 | 2019-05-15 16:10 | 4h |  | Rodrigo Costa Fernandes | 4h | 4h | 100 | 100 | 100 |
| 61 | 1.2.2.4.3 | Auto-avaliação | 10min | 2019-05-10 09:10 A | 2019-05-10 09:20 A | 60 | 100% | 2019-05-15 16:10 | 2019-05-15 16:20 | 10min |  | Rodrigo Costa Fernandes; Samuel Pires Brito | 0.33h | 0.33h | 8.33 | 4.17 | 8.33 |
| 62 | 1.2.2.4.4 | Conclusões | 5h | 2019-05-10 09:20 A | 2019-05-10 15:20 A | 61 | 100% | 2019-05-15 16:20 | 2019-05-16 13:20 | 5h |  | Samuel Pires Brito | 5h | 5h | 125 | 125 | 125 |
| 63 | 1.3 | **Fazer a programação do Projeto** | 19.62d | 2019-05-10 15:20 A | 2019-06-07 11:20 A |  | 100% | 2019-05-16 13:20 | 2019-06-28 15:00 | 31.21d? |  |  | 157h | 157h | 3,925 | 6,979.17 | 3,925 |
| 64 | 1.3.1 | **Backlog** | 0.38d | 2019-05-10 15:20 A | 2019-05-13 09:20 A |  | 100% | 2019-05-16 13:20 | 2019-05-16 13:55 | 0.07d |  |  | 3h | 3h | 75 | 29.17 | 75 |
| 65 | 1.3.1.1 | **Base de Dados** | 0.38d | 2019-05-10 15:20 A | 2019-05-13 09:20 A |  | 100% | 2019-05-16 13:20 | 2019-05-16 13:55 | 0.07d |  |  | 3h | 3h | 75 | 29.17 | 75 |
| 66 | 1.3.1.1.1 | Definir as tabelas | 60min | 2019-05-10 15:20 A | 2019-05-10 16:20 A | 62 | 100% | 2019-05-16 13:20 | 2019-05-16 13:30 | 10min |  | Rodrigo Costa Fernandes | 1h | 1h | 25 | 8.33 | 25 |
| 67 | 1.3.1.1.2 | Definir as colunas | 60min | 2019-05-10 16:20 A | 2019-05-13 08:20 A | 66 | 100% | 2019-05-16 13:30 | 2019-05-16 13:40 | 10min |  | Rodrigo Costa Fernandes | 1h | 1h | 25 | 8.33 | 25 |
| 68 | 1.3.1.1.3 | Definir o tipo de dados de cada coluna | 60min | 2019-05-13 08:20 A | 2019-05-13 09:20 A | 67 | 100% | 2019-05-16 13:40 | 2019-05-16 13:55 | 15min |  | Samuel Pires Brito | 1h | 1h | 25 | 12.5 | 25 |
| 69 | 1.3.2 | **Sprint 1** | 5.75d | 2019-05-13 09:20 A | 2019-05-20 16:20 A |  | 100% | 2019-05-27 08:00 | 2019-05-31 17:00 | 5d | 2019-05-31 17:00 |  | 46h | 46h | 1,150 | 1,350 | 1,150 |
| 70 | 1.3.2.1 | **User Story 1 (Design)** | 0.88d | 2019-05-13 09:20 A | 2019-05-14 08:20 A |  | 100% |  |  |  |  |  | 7h | 7h | 175 |  | 175 |
| 71 | 1.3.2.1.1 | Implementação do Menu Principal | 3h | 2019-05-13 09:20 A | 2019-05-13 13:20 A | 68 | 100% | 2019-05-27 08:00 | 2019-05-27 10:00 | 2h |  | Rodrigo Costa Fernandes | 3h | 3h | 75 | 50 | 75 |
| 72 | 1.3.2.1.2 | Implementação do Menu Clientes | 2h | 2019-05-13 13:20 A | 2019-05-13 15:20 A | 71 | 100% | 2019-05-27 10:00 | 2019-05-27 12:00 | 2h |  | Rodrigo Costa Fernandes | 2h | 2h | 50 | 50 | 50 |
| 73 | 1.3.2.1.3 | Implementação do Menu Oficina | 2h | 2019-05-13 15:20 A | 2019-05-14 08:20 A | 72 | 100% | 2019-05-27 13:00 | 2019-05-27 15:00 | 2h |  | Rodrigo Costa Fernandes | 2h | 2h | 50 | 50 | 50 |
| 74 | 1.3.2.2 | User Story 2 - (Implementação da funcionalidade Inserir Clientes) | 1d | 2019-05-14 08:20 A | 2019-05-15 08:20 A | 73 | 100% | 2019-05-28 10:00 | 2019-05-28 11:00 | 1h |  | Rodrigo Costa Fernandes | 8h | 8h | 200 | 25 | 200 |
| 75 | 1.3.2.3 | User Story 3 - (Implementação da funcionalidade Alterar Clientes) | 1d | 2019-05-15 08:20 A | 2019-05-16 08:20 A | 74 | 100% | 2019-05-28 11:00 | 2019-05-28 15:00 | 3h |  | Samuel Pires Brito | 8h | 8h | 200 | 75 | 200 |
| 76 | 1.3.2.4 | User Story 4 - (Implementação da funcionalidade Eliminar Clientes) | 1d | 2019-05-16 08:20 A | 2019-05-17 08:20 A | 75 | 100% | 2019-05-28 15:00 | 2019-05-29 15:00 | 1d |  | Samuel Pires Brito | 8h | 8h | 200 | 200 | 200 |
| 77 | 1.3.2.5 | User Story 5 - (Implementação da funcionalidade Inserir Carros de Oficina) | 5h | 2019-05-17 08:20 A | 2019-05-17 14:20 A | 76 | 100% | 2019-05-29 15:00 | 2019-05-31 15:00 | 2d |  | Rodrigo Costa Fernandes | 5h | 5h | 125 | 400 | 125 |
| 78 | 1.3.2.6 | User Story 6 - (Implementação da funcionalidade Alterar Carros de Oficina) | 5h | 2019-05-17 14:20 A | 2019-05-20 10:20 A | 77 | 100% | 2019-05-31 15:00 | 2019-06-04 15:00 | 2d |  | Rodrigo Costa Fernandes | 5h | 5h | 125 | 400 | 125 |
| 79 | 1.3.2.7 | User Story 7 - (Implementação da funcionalidade Eliminar Carro de Oficina) | 5h | 2019-05-20 10:20 A | 2019-05-20 16:20 A | 78 | 100% |  |  |  |  | Samuel Pires Brito | 5h | 5h | 125 |  | 125 |

| ID | WBS | Task | Duration | Start | Finish | Predecessors | Complete | Resources | Work | Actual work | Cost | Actual cost |
| --- | --- | --- | --- | --- | --- | --- | --- | --- | --- | --- | --- | --- |
| 80 | 1.3.3 | **Sprint 2** | 13.5d | 2019-05-20 16:20 A | 2019-06-07 11:20 A |  | 100% |  | 108h | 108h | 2,700 | 2,700 |
| 81 | 1.3.3.1 | **User Story 1 (Serviços de Oficina)** | 3d | 2019-05-20 16:20 A | 2019-05-23 16:20 A |  | 100% |  | 24h | 24h | 600 | 600 |
| 82 | 1.3.3.1.1 | Implementação da funcionalidade Inserir Serviço | 1d | 2019-05-20 16:20 A | 2019-05-21 16:20 A | 79 | 100% | Rodrigo Costa Fernandes | 8h | 8h | 200 | 200 |
| 83 | 1.3.3.1.2 | Implementação da funcionalidade Alterar Serviços | 1d | 2019-05-21 16:20 A | 2019-05-22 16:20 A | 82 | 100% | Rodrigo Costa Fernandes | 8h | 8h | 200 | 200 |
| 84 | 1.3.3.1.3 | Implementação da funcionalidade Eliminar Serviços | 1d | 2019-05-22 16:20 A | 2019-05-23 16:20 A | 83 | 100% | Samuel Pires Brito | 8h | 8h | 200 | 200 |
| 85 | 1.3.3.2 | **User Story 2 (Parcelas de Oficina)** | 3d | 2019-05-23 16:20 A | 2019-05-28 16:20 A |  | 100% |  | 24h | 24h | 600 | 600 |
| 86 | 1.3.3.2.1 | Implementação da funcionalidade Inserir Parcela | 1d | 2019-05-23 16:20 A | 2019-05-24 16:20 A | 84 | 100% | Samuel Pires Brito | 8h | 8h | 200 | 200 |
| 87 | 1.3.3.2.2 | Implementação da funcionalidade Alterar Parcela | 1d | 2019-05-24 16:20 A | 2019-05-27 16:20 A | 86 | 100% | Rodrigo Costa Fernandes | 8h | 8h | 200 | 200 |
| 88 | 1.3.3.2.3 | Implementação da funcionalidade Eliminar Parcela | 1d | 2019-05-27 16:20 A | 2019-05-28 16:20 A | 87 | 100% | Rodrigo Costa Fernandes | 8h | 8h | 200 | 200 |
| 89 | 1.3.3.3 | **User Story 3 (Carros de Alugueres)** | 1.88d | 2019-05-28 16:20 A | 2019-05-30 15:20 A |  | 100% |  | 15h | 15h | 375 | 375 |
| 90 | 1.3.3.3.1 | Implementação da funcionalidade Inserir Carro de Aluguer | 5h | 2019-05-28 16:20 A | 2019-05-29 13:20 A | 88 | 100% | Rodrigo Costa Fernandes | 5h | 5h | 125 | 125 |
| 91 | 1.3.3.3.2 | Implementação da funcionalidade Alterar Carro de Aluguer | 5h | 2019-05-29 13:20 A | 2019-05-30 09:20 A | 90 | 100% | Rodrigo Costa Fernandes | 5h | 5h | 125 | 125 |
| 92 | 1.3.3.3.3 | Implementação da funcionalidade Eliminar Carro de Aluguer | 5h | 2019-05-30 09:20 A | 2019-05-30 15:20 A | 91 | 100% | Samuel Pires Brito | 5h | 5h | 125 | 125 |
| 93 | 1.3.3.4 | **User Story 4 (Alugueres)** | 1.88d | 2019-05-30 15:20 A | 2019-06-03 14:20 A |  | 100% |  | 15h | 15h | 375 | 375 |
| 94 | 1.3.3.4.1 | Implementação da funcionalidade Inserir Alugueres | 5h | 2019-05-30 15:20 A | 2019-05-31 11:20 A | 92 | 100% | Rodrigo Costa Fernandes | 5h | 5h | 125 | 125 |
| 95 | 1.3.3.4.2 | Implementação da funcionalidade Alterar Alugueres | 5h | 2019-05-31 11:20 A | 2019-06-03 08:20 A | 94 | 100% | Samuel Pires Brito | 5h | 5h | 125 | 125 |
| 96 | 1.3.3.4.3 | Implementação da funcionalidade Eliminar Alugueres | 5h | 2019-06-03 08:20 A | 2019-06-03 14:20 A | 95 | 100% | Rodrigo Costa Fernandes | 5h | 5h | 125 | 125 |
| 97 | 1.3.3.5 | **User Story 5 (Carros de Vendas)** | 1.88d | 2019-06-03 14:20 A | 2019-06-05 13:20 A |  | 100% |  | 15h | 15h | 375 | 375 |
| 98 | 1.3.3.5.1 | Implementação da funcionalidade Inserir Carro de Venda | 5h | 2019-06-03 14:20 A | 2019-06-04 10:20 A | 96 | 100% | Samuel Pires Brito | 5h | 5h | 125 | 125 |
| 99 | 1.3.3.5.2 | Implementação da funcionalidade Alterar Carro de Venda | 5h | 2019-06-04 10:20 A | 2019-06-04 16:20 A | 98 | 100% | Samuel Pires Brito | 5h | 5h | 125 | 125 |
| 100 | 1.3.3.5.3 | Implementação da funcionalidade Eliminar Carro de Venda | 5h | 2019-06-04 16:20 A | 2019-06-05 13:20 A | 99 | 100% | Rodrigo Costa Fernandes | 5h | 5h | 125 | 125 |
| 101 | 1.3.3.6 | **User Story 6 (Vendas)** | 1.88d | 2019-06-05 13:20 A | 2019-06-07 11:20 A |  | 100% |  | 15h | 15h | 375 | 375 |
| 102 | 1.3.3.6.1 | Implementação da funcionalidade Inserir Vendas | 5h | 2019-06-05 13:20 A | 2019-06-06 09:20 A | 100 | 100% | Samuel Pires Brito | 5h | 5h | 125 | 125 |
| 103 | 1.3.3.6.2 | Implementação da funcionalidade Alterar Vendas | 5h | 2019-06-06 09:20 A | 2019-06-06 15:20 A | 102 | 100% | Rodrigo Costa Fernandes | 5h | 5h | 125 | 125 |
| 104 | 1.3.3.6.3 | Implementação da funcionalidade Eliminar Vendas | 5h | 2019-06-06 15:20 A | 2019-06-07 11:20 A | 103 | 100% | Samuel Pires Brito | 5h | 5h | 125 | 125 |
